Schedule from MS Project, 2021-07-01 to 2021-09-20.

## Calendars

- Standard: Mon-Sat 07:00-11:00, 13:30-17:30; Sun off.

## Schedule

| ID | WBS | Task | Duration | Start | Finish | Predecessors | Total slack | Free slack | Constraint |
| --- | --- | --- | --- | --- | --- | --- | --- | --- | --- |
| 1 | 1 | **TIẾN ĐỘ XÂY DỰNG NHÀ KHO HÓA CHẤT** | 45d | 2021-07-29 | 2021-09-20 |  | 0d |  |  |
| 2 | 1.1 | **PHẦN VIỆC XÂY DỰNG** | 45d | 2021-07-29 | 2021-09-20 |  | 0d |  |  |
| 3 | 1.1.1 | Ép cọc nhồi | 14d | 2021-07-29 | 2021-08-14 |  | 0d |  | start no earlier than 2021-07-29 |
| 4 | 1.1.2 | Đào móng cột, phá đầu cọc | 4d | 2021-08-11 | 2021-08-16 | 3SF+15d | 0d |  |  |
| 5 | 1.1.3 | Bê tông lót móng | 1d | 2021-08-16 | 2021-08-17 | 4 | 0d |  |  |
| 6 | 1.1.4 | Đan thép móng cột | 2d | 2021-08-17 | 2021-08-19 | 5 | 0d |  |  |
| 7 | 1.1.5 | Ván khuôn móng cột | 2d | 2021-08-18 | 2021-08-20 | 6SF+3d | 0d |  |  |
| 8 | 1.1.6 | Bê tông móng cột | 2d | 2021-08-20 | 2021-08-23 | 7 | 0d |  |  |
| 9 | 1.1.7 | Đan thép rằng móng | 1d | 2021-08-23 | 2021-08-24 | 8 | 0d |  |  |
| 10 | 1.1.8 | Ván khuôn rằng móng | 1d | 2021-08-24 | 2021-08-25 | 9 | 0d |  |  |
| 11 | 1.1.9 | Bê tông rằng móng | 1d | 2021-08-25 | 2021-08-26 | 10 | 0d |  |  |
| 12 | 1.1.10 | Xây tường móng | 3d | 2021-08-26 | 2021-08-30 | 11 | 0d |  |  |
| 13 | 1.1.11 | San cát, đá, đầm lèn nền nhà | 2d | 2021-08-30 | 2021-09-01 | 12 | 0d |  |  |
| 14 | 1.1.12 | Xây tườn nhà | 5d | 2021-09-01 | 2021-09-07 | 13 | 0d |  |  |
| 15 | 1.1.13 | Chát tường nhà | 4d | 2021-09-07 | 2021-09-11 | 14 | 0d |  |  |
| 16 | 1.1.14 | Đổ bê tông nền nhà, bê tông cửa ra vào | 3d | 2021-09-11 | 2021-09-15 | 15 | 0d |  |  |
| 17 | 1.1.15 | Sơn tườn nhà, nền nhà | 3d | 2021-09-15 | 2021-09-18 | 15FS+3d | 1d |  |  |
| 18 | 1.1.16 | Làm rãnh thoát nước | 3d | 2021-09-15 | 2021-09-18 | 16 | 1d |  |  |
| 19 | 1.1.17 | Rải đá xung quanh nhà kho | 4d | 2021-09-15 | 2021-09-20 | 16 | 0d |  |  |
| 20 | 1.2 | **LÀM ĐƯỜNG VÀO KHO HÓA CHẤT** | 6d | 2021-08-11 | 2021-08-18 |  | 28d |  |  |
| 21 | 1.2.1 | Làm sạch cỏ, múc lớp đất tạp bề mặt | 1d | 2021-08-11 | 2021-08-12 | 4SF+1d | 28d | 0d |  |
| 22 | 1.2.2 | Đổ cát tạo nền đương | 1d | 2021-08-12 | 2021-08-13 | 21 | 28d | 0d |  |
| 23 | 1.2.3 | Đổ đá, lu đường, lớp đá 4x6 dầy 300mm | 2d | 2021-08-13 | 2021-08-16 | 22 | 28d | 0d |  |
| 24 | 1.2.4 | Đổ bê tông đường M250 đa 1x2 dầy 200mm | 2d | 2021-08-16 | 2021-08-18 | 23 | 28d |  |  |

Notes:
- 2: Thuộc hạng mục công việc của tổ xây dựng

| ID | WBS | Task | Type | Duration | Start | Finish | Predecessors | Total slack | Free slack | Constraint |
| --- | --- | --- | --- | --- | --- | --- | --- | --- | --- | --- |
| 25 | 1.3 | **BÃI ĐỂ THÙNG HÓA CHẤT** |  | 4d | 2021-08-11 | 2021-08-16 |  | 30d |  |  |
| 26 | 1.3.1 | Làm sạch cỏ, múc lớp đất tạp bề mặt |  | 1d | 2021-08-11 | 2021-08-12 | 4SF+1d | 30d | 0d |  |
| 27 | 1.3.2 | Đổ cát tạo nền đương |  | 1d | 2021-08-12 | 2021-08-13 | 26 | 30d | 0d |  |
| 28 | 1.3.3 | Đổ đá, lu đường, lớp đá 4x6 dầy 300mm |  | 2d | 2021-08-13 | 2021-08-16 | 27 | 30d |  |  |
| 29 | 1.4 | **XÂY DỰNG HỐ GA CHỨA NƯỚC RỬA SÀN** |  | 4d | 2021-08-11 | 2021-08-16 |  | 30d |  |  |
| 30 | 1.4.1 | Đào đất móng |  | 1d | 2021-08-11 | 2021-08-12 | 4SF+1d | 30d | 0d |  |
| 31 | 1.4.2 | Bê tông lót hố ga |  | 1d | 2021-08-12 | 2021-08-13 | 30 | 30d | 0d |  |
| 32 | 1.4.3 | Đan thép tấm đan hố ga |  | 1d | 2021-08-12 | 2021-08-13 | 30 | 31d | 0d |  |
| 33 | 1.4.4 | Bê tông tấm đan hố ga |  | 1d | 2021-08-13 | 2021-08-14 | 32 | 31d |  |  |
| 34 | 1.4.5 | Xây tường hố ga |  | 1d | 2021-08-13 | 2021-08-14 | 31 | 30d | 0d |  |
| 35 | 1.4.6 | Chát tường hố ga |  | 1d | 2021-08-14 | 2021-08-16 | 34 | 30d |  |  |
| 36 | 1.5 | **GIA CÔNG, CHẾ TẠO VÀ LẮP DỰNG KẾT CẤU THÉP** |  | 42d | 2021-07-29 | 2021-09-16 |  | 3d |  |  |
| 37 | 1.5.1 | **GIA CÔNG CHẾ TẠO VÀ VẬN CHUYỂN KCT ĐẾN CÔNG TRƯƠNG** |  | 27d | 2021-07-29 | 2021-08-30 |  | 12d |  |  |
| 38 | 1.5.1.1 | Công tác mua sắm vật tư KCT |  | 10d | 2021-07-29 | 2021-08-10 | 3SF+10d | 12d | 0d |  |
| 39 | 1.5.1.2 | Gia công, chế tạo cột |  | 5d | 2021-08-10 | 2021-08-16 | 38 | 12d | 0d |  |
| 40 | 1.5.1.3 | Sơn và vận chuyển KCT tới công trương |  | 2d | 2021-08-16 | 2021-08-18 | 39 | 12d |  |  |
| 41 | 1.5.1.4 | Gia công, chế tạo vì kèo, xà gồ |  | 8d | 2021-08-10 | 2021-08-19 | 38 | 24d | 0d |  |
| 42 | 1.5.1.5 | Sơn và vận chuyển KCT tới công trương |  | 3d | 2021-08-19 | 2021-08-23 | 41 | 24d |  |  |
| 43 | 1.5.1.6 | Gia công, chế tạo cửa đi |  | 6d | 2021-08-10 | 2021-08-17 | 38 | 18d | 0d |  |
| 44 | 1.5.1.7 | Sơn và vận chuyển KCT tới công trương |  | 3d | 2021-08-26 | 2021-08-30 | 43FS+8d | 18d |  |  |
| 45 | 1.5.2 | **LẮP DỰNG KẾT CẤU THÉP** |  | 13d | 2021-09-01 | 2021-09-16 |  | 0d |  |  |
| 46 | 1.5.2.1 | Lắp dựng cột |  | 2d | 2021-09-01 | 2021-09-03 | 13, 40 | 0d |  |  |
| 47 | 1.5.2.2 | Lắp dựng vì kèo, xà gồ |  | 5d | 2021-09-02 | 2021-09-08 | 46SF+6d | 0d |  |  |
| 48 | 1.5.2.3 | Hoàn thành lắp đặt kết cấu thép | milestone | 0d | 2021-09-08 | 2021-09-08 |  | 10d |  | start no earlier than 2021-09-08 |
| 49 | 1.5.2.4 | Bắn tôn mái, tôn thưng |  | 4d | 2021-09-08 | 2021-09-13 | 47 | 3d | 0d |  |
| 50 | 1.5.2.5 | Lắp đặt phụ kiên, cửa chớp, máng nước |  | 3d | 2021-09-13 | 2021-09-16 | 49 | 3d |  |  |
| 51 | 1.5.2.6 | Lắp đặt cửa chính, cửa phụ nhà kho |  | 3d | 2021-09-13 | 2021-09-16 | 49 | 3d |  |  |

| ID | WBS | Task | Type | Duration | Start | Finish | Predecessors | Total slack | Free slack | Constraint |
| --- | --- | --- | --- | --- | --- | --- | --- | --- | --- | --- |
| 52 | 2 | **PHẦN PCCC** |  | 11d | 2021-09-07 | 2021-09-20 |  | 0d |  |  |
| 53 | 2.1 | Lắp đặt phần ống cứu hỏa |  | 4d | 2021-09-07 | 2021-09-11 | 14 | 7d |  |  |
| 54 | 2.2 | Lắp đặt tủ cứu hỏa và bình chữa cháy |  | 2d | 2021-09-11 | 2021-09-14 | 15 | 5d |  |  |
| 55 | 2.3 | Lắp đặt ống nhựa luồn dây báo cháy |  | 5d | 2021-09-08 | 2021-09-14 | 47 | 0d |  |  |
| 56 | 2.4 | Lắp đặt đầu báo cháy và thiết bị báo cháy |  | 2d | 2021-09-08 | 2021-09-10 | 47 | 8d |  |  |
| 57 | 2.5 | Kéo cáp báo cháy |  | 2d | 2021-09-14 | 2021-09-16 | 55 | 0d |  |  |
| 58 | 2.6 | Đấu nối cáp báo cháy |  | 3d | 2021-09-16 | 2021-09-20 | 57 | 0d |  |  |
| 59 | 3 | **PHẦN ĐIỆN** |  | 69d | 2021-07-01 | 2021-09-20 |  | 0d |  |  |
| 60 | 3.1 | **Tiếp địa** |  | 3d | 2021-08-30 | 2021-09-02 |  | 15d |  |  |
| 61 | 3.1.1 | Đào đất và chôn đây cáp ngầm |  | 3d | 2021-08-30 | 2021-09-02 | 12 | 15d |  |  |
| 62 | 3.1.2 | Đóng cọc tiếp địa |  | 3d | 2021-08-30 | 2021-09-02 | 12 | 15d |  |  |
| 63 | 3.2 | **Chống sét** |  | 3d | 2021-09-13 | 2021-09-16 |  | 3d |  |  |
| 64 | 3.2.1 | Lắp kim thu lôi |  | 1d | 2021-09-13 | 2021-09-14 | 49 | 5d |  |  |
| 65 | 3.2.2 | Đi dây chống sét |  | 3d | 2021-09-13 | 2021-09-16 | 49 | 3d |  |  |
| 66 | 3.3 | **Chiếu sáng** |  | 7d | 2021-09-08 | 2021-09-16 |  | 3d |  |  |
| 67 | 3.3.1 | Lắp đặt tủ chiếu sáng |  | 1d | 2021-09-08 | 2021-09-09 | 47 | 9d |  |  |
| 68 | 3.3.2 | Lắp đặt ống luồn cáp |  | 2d | 2021-09-08 | 2021-09-10 | 47 | 3d | 0d |  |
| 69 | 3.3.3 | Kéo cáp chiếu sáng |  | 1d | 2021-09-10 | 2021-09-11 | 68 | 3d | 0d |  |
| 70 | 3.3.4 | Lắp đặt bóng đèn |  | 3d | 2021-09-08 | 2021-09-11 | 47 | 7d |  |  |
| 71 | 3.3.5 | Lắp đặt ổ cắm và quặt |  | 1d | 2021-09-08 | 2021-09-09 | 47 | 9d |  |  |
| 72 | 3.3.6 | Đấu nối cáp chiếu sáng |  | 4d | 2021-09-11 | 2021-09-16 | 69 | 3d |  |  |
| 73 | 3.4 | **Kéo cáp nguồn chiếu sáng và báo cháy trên PR** |  | 69d | 2021-07-01 | 2021-09-20 |  | 0d |  |  |
| 74 | 3.4.1 | Lật lắp máng cáp |  | 3d | 2021-07-01 | 2021-07-05 |  | 62d | 0d |  |
| 75 | 3.4.2 | Kéo cáp nguồn chiếu sáng |  | 1d | 2021-07-05 | 2021-07-06 | 74 | 65d |  |  |
| 76 | 3.4.3 | Kéo cáp nguồn báo cháy |  | 1d | 2021-07-05 | 2021-07-06 | 74 | 62d | 0d |  |
| 77 | 3.4.4 | Đậy lắp máng cáp |  | 3d | 2021-07-06 | 2021-07-09 | 76 | 62d |  |  |
| 78 | 3.4.5 | Bàn giao nhà kho hóa chất | milestone | 0d | 2021-09-20 | 2021-09-20 |  | 0d |  | start no earlier than 2021-09-20 |
